# CVN73-PIA26

Schedule from Primavera P6, 2026-07-29 to 2027-01-23, data date 2026-08-10, A marks actual dates.
Must finish by 2027-01-23

## Resources

| Resource | Group |
| --- | --- |
| Preservation / Blast & Coat | labor |
| Mechanical | labor |
| Structural Welding | labor |
| Electrical | labor |
| Sheet Metal / HVAC | labor |

## Schedule

| ID | WBS | Activity | Type | Duration | Start | Finish | Predecessors | Complete | Remaining | Planned start | Planned finish | Constraint | Calendar | Resources | Compartment (deck-frame-side-usage) | Work Item / WO Number | Work Classification |
| --- | --- | --- | --- | --- | --- | --- | --- | --- | --- | --- | --- | --- | --- | --- | --- | --- | --- |
|  | PIA26 | **CVN-73 PIA-26** |  |  | 2026-07-29 | 2027-01-23 |  |  |  |  |  |  |  |  |  |  |  |
|  | MSTN | **Key Events** |  |  | 2026-11-20 | 2027-01-23 |  |  |  |  |  |  |  |  |  |  |  |
| M0100 |  | KEY EVENT — Undock | milestone | 0d | 2026-11-20 | 2026-11-20 | A2010 |  |  |  |  | finish on 2026-11-20 |  |  |  |  |  |
| M0200 |  | KEY EVENT — Fast Cruise | milestone | 0d | 2027-01-06 | 2027-01-06 |  |  |  |  |  |  |  |  |  |  |  |
| M0300 |  | KEY EVENT — Delivery | milestone | 0d | 2027-01-23 | 2027-01-23 | M0200 |  |  |  |  | finish on 2027-01-23 |  |  |  |  |  |
|  | Z5 | **Zone 5 — Hangar & Main Deck** |  |  | 2026-08-18 | 2026-11-13 |  |  |  |  |  |  |  |  |  |  |  |
|  | 130 | **130 Hull Decks** |  |  | 2026-08-18 | 2026-11-13 |  |  |  |  |  |  |  |  |  |  |  |
| A2010 |  | Hangar Bay 2 structural hot work |  | 0d | 2026-08-18 A | 2026-11-13 |  | 3% | 0d | 2026-08-17 | 2026-11-13 |  | Yard Round-the-Clock | Structural Welding [410 h] | 1-136-0-Q | WI-4471 | HOT WORK |
|  | Z6 | **Zone 6 — Aft Machinery & Berthing** |  |  | 2026-07-29 | 2026-12-18 |  |  |  |  |  |  |  |  |  |  |  |
|  | 431 | **431 Interior Communications** |  |  | 2026-08-07 | 2026-10-23 |  |  |  |  |  |  |  |  |  |  |  |
| A5010 |  | Cableway CW-3 — pull & terminate, Fr 152 |  | 0d | 2026-08-07 A | 2026-08-12 |  | 92% | 0d |  |  |  |  | Electrical [260 h] | 3-152-0-Q | WI-3310 |  |
| A5020 |  | Cableway CW-3 — terminate in switchgear |  | 0d | 2026-08-10 A | 2026-08-17 | A5010 SS+2.4d | 13% | 0d |  |  |  |  | Electrical [300 h] | 3-148-2-E | WI-3310 |  |
| A3010 |  | Aft IC preservation & cableway closure |  | 0d | 2026-08-12 | 2026-08-21 |  |  |  |  |  | start on 2026-08-12 |  | Electrical [340 h] | 4-141-0-C | WI-3905 |  |
| A3020 |  | Switchboard No. 1 rip-out |  | 0d | 2026-09-19 | 2026-10-23 | A3010 |  |  |  |  |  |  | Electrical [160 h] | 4-102-2-E | WI-1905 |  |
|  | 506 | **506 Tanks & Voids** |  |  | 2026-08-01 | 2026-08-22 |  |  |  |  |  |  |  |  |  |  |  |
| A1010 |  | Reserve feed water tank preservation |  | 0d | 2026-08-01 A | 2026-08-14 |  | 75% | 0d |  |  |  |  | Preservation / Blast & Coat [680 h] | 4-110-2-W | WI-3318 |  |
| A1020 |  | Sounding & vent piping modification |  | 0d | 2026-08-15 | 2026-08-22 | A1010 |  |  |  |  |  |  | Mechanical [240 h] | 4-110-2-W | WI-3402 |  |
|  | 512 | **512 Ventilation & Uptakes** |  |  | 2026-07-29 | 2026-12-18 |  |  |  |  |  |  |  |  |  |  |  |
| A4010 |  | HVAC trunk T1 — install & hang, Fr 172 |  | 0d | 2026-07-29 A | 2026-08-04 A |  | 100% |  |  |  |  |  | Sheet Metal / HVAC [620 h] | 3-172-0-M | WI-2201 |  |
| A4020 |  | HVAC trunk T1 — install & hang, Fr 160 |  | 0d | 2026-08-08 A | 2026-08-13 | A4010 | 79% | 0d |  |  |  |  | Sheet Metal / HVAC [380 h] | 3-160-2-Q | WI-2201 |  |
| A4030 |  | HVAC branch B1 — mess decks |  | 0d | 2026-08-09 A | 2026-08-15 | A4020 SS+2.4d | 73% | 0d |  |  |  |  | Sheet Metal / HVAC [560 h] | 2-160-1-Q | WI-2201 |  |
| A4040 |  | HVAC branch B2 — scullery (3-185-0-L) |  | 0d | 2026-08-09 A | 2026-08-18 | A4030 SS+4.8d | 45% | 0d |  |  |  |  | Sheet Metal / HVAC [400 h] |  | WI-2201 |  |
| A4050 |  | HVAC riser R1 — switchgear room penetration |  | 0d | 2026-08-10 A | 2026-08-16 | A5020, A6010 FS-0.8d | 30% | 0d |  |  |  |  | Sheet Metal / HVAC [320 h] | 3-148-2-E | WI-2201 |  |
| A3030 |  | Fan room duct insulation |  | 0d | 2026-11-14 | 2026-12-18 | A3010 |  |  |  |  |  |  | Preservation / Blast & Coat [140 h] | 4-120-4-Q | WI-5571 |  |

| ID | WBS | Activity | Duration | Start | Finish | Complete | Remaining | Resources | Compartment (deck-frame-side-usage) | Work Classification |
| --- | --- | --- | --- | --- | --- | --- | --- | --- | --- | --- |
|  | 631 | **631 Preservation** |  | 2026-08-10 | 2026-08-10 |  |  |  |  |  |
| A6010 |  | Coat final — cable trunk & IC space Fr 160 | 0d | 2026-08-10 A | 2026-08-10 | 60% | 0d | Preservation / Blast & Coat [48 h] | 3-160-2-Q | COATING |
